Schedule from MS Project, 2024-01-15 to 2024-07-10, 6 hours a day, costs in €.

## Calendars

- Standard: Mon-Fri 08:00-12:00, 13:00-17:00; Sat-Sun off.

## Resources

| Resource | Rate |
| --- | --- |
| Investigador | 30 |

## Schedule

| ID | WBS | Task | Duration | Start | Finish | Predecessors | Total slack | Free slack | Constraint | Resources | Work | Cost |
| --- | --- | --- | --- | --- | --- | --- | --- | --- | --- | --- | --- | --- |
| 1 | 1 | **Trabajo Fin de Grado** | 170.17d | 2024-01-15 10:00 | 2024-07-10 16:00 |  | 0d |  |  | Investigador | 1996h | 59,880 |
| 2 | 1.1 | **Revisión de trabajos relacionados** | 6.17d | 2024-01-15 10:00 | 2024-01-19 16:00 |  |  |  |  | Investigador | 49h | 1,470 |
| 3 | 1.1.1 | Herramientas de prevención de ataques | 3h | 2024-01-15 10:00 | 2024-01-15 14:00 |  | 141.5d | 0d |  | Investigador | 3h | 90 |
| 4 | 1.1.2 | Prevención contra ransomware | 3h | 2024-01-15 14:00 | 2024-01-15 17:00 | 3 | 141.5d | 0d | start no earlier than 2023-11-21 10:00 | Investigador | 3h | 90 |
| 5 | 1.1.3 | Hardening de Linux | 3h | 2024-01-16 08:00 | 2024-01-16 11:00 | 4 | 141.5d | 0d | start no earlier than 2023-11-22 10:00 | Investigador | 3h | 90 |
| 6 | 1.1.4 | Mitigación de ataques ransomware | 3h | 2024-01-16 11:00 | 2024-01-16 15:00 | 5 | 141.5d |  | start no earlier than 2023-11-23 10:00 | Investigador | 3h | 90 |
| 7 | 1.2 | **Procedimiento** | 19.67d | 2024-02-01 10:00 | 2024-02-21 17:00 |  |  |  |  | Investigador | 196h | 5,880 |
| 8 | 1.2.1 | **v7 de los controles CIS** | 1.5d | 2024-02-01 10:00 | 2024-02-02 11:00 |  | 143.17d | 3.17d |  | Investigador | 34h | 1,020 |
| 9 | 1.2.1.1 | **Mapeo de los TTPs a CIS CSC** | 0.83d | 2024-02-01 10:00 | 2024-02-01 16:00 |  | 143.17d |  |  | Investigador | 10h | 300 |
| 10 | 1.2.1.1.1 | Conti | 2h | 2024-02-01 10:00 | 2024-02-01 12:00 |  | 116.5d | 0d |  | Investigador | 2h | 60 |
| 11 | 1.2.1.1.2 | Hive | 1h | 2024-02-01 13:00 | 2024-02-01 14:00 | 10 | 116.5d | 0d | start no earlier than 2023-11-21 10:00 | Investigador | 1h | 30 |
| 12 | 1.2.1.1.3 | Lazarus | 1h | 2024-02-01 14:00 | 2024-02-01 15:00 | 11 | 116.5d | 0d | start no earlier than 2023-11-22 10:00 | Investigador | 1h | 30 |
| 13 | 1.2.1.1.4 | PYSA | 1h | 2024-02-01 15:00 | 2024-02-01 16:00 | 12 | 116.5d | 0d | start no earlier than 2023-11-23 10:00 | Investigador | 1h | 30 |
| 14 | 1.2.1.2 | **Mapeo de los CIS CSC a las recomendaciones correspondientes del CIS benchmark** | 0.83d | 2024-02-01 13:00 | 2024-02-02 09:00 |  | 143.17d | 0d |  | Investigador | 13h | 390 |
| 15 | 1.2.1.2.1 | Conti | 2h | 2024-02-01 13:00 | 2024-02-01 15:00 | 10 | 117d |  |  | Investigador | 2h | 60 |
| 16 | 1.2.1.2.2 | Hive | 0.33d | 2024-02-01 14:00 | 2024-02-01 16:00 | 11 | 116.83d |  |  | Investigador | 2h | 60 |
| 17 | 1.2.1.2.3 | Lazarus | 0.33d | 2024-02-01 15:00 | 2024-02-01 17:00 | 12 | 116.67d |  |  | Investigador | 2h | 60 |
| 18 | 1.2.1.2.4 | PYSA | 0.33d | 2024-02-01 16:00 | 2024-02-02 09:00 | 13 | 116.5d |  |  | Investigador | 2h | 60 |
| 19 | 1.2.1.3 | Modificar el script de Ansible Lockdown | 2h | 2024-02-02 09:00 | 2024-02-02 11:00 | 14 | 116.5d | 3.17d |  | Investigador | 2h | 60 |
| 20 | 1.2.2 | **v8 de los controles CIS** | 2d | 2024-02-05 10:00 | 2024-02-06 15:00 |  |  |  |  | Investigador | 34h | 1,020 |
| 21 | 1.2.2.1 | **Mapeo de los TTPs a las recomendaciones correspondientes del CIS benchmark** | 1.67d | 2024-02-05 10:00 | 2024-02-06 12:00 |  | 140d | 0d |  | Investigador | 20h | 600 |
| 22 | 1.2.2.1.1 | Conti | 4h | 2024-02-05 10:00 | 2024-02-05 15:00 |  | 113.33d | 0d |  | Investigador | 4h | 120 |
| 23 | 1.2.2.1.2 | Hive | 2h | 2024-02-05 15:00 | 2024-02-05 17:00 | 22 | 113.33d | 0d |  | Investigador | 2h | 60 |
| 24 | 1.2.2.1.3 | Lazarus | 0.33d | 2024-02-06 08:00 | 2024-02-06 10:00 | 23 | 113.33d | 0d |  | Investigador | 2h | 60 |
| 25 | 1.2.2.1.4 | PYSA | 0.33d | 2024-02-06 10:00 | 2024-02-06 12:00 | 24 | 113.33d |  |  | Investigador | 2h | 60 |
| 26 | 1.2.2.2 | Modificar el script de Ansible Lockdown | 2h | 2024-02-06 13:00 | 2024-02-06 15:00 | 21 | 113.33d | 0d |  | Investigador | 2h | 60 |

| ID | WBS | Task | Duration | Start | Finish | Predecessors | Total slack | Free slack | Constraint | Resources | Work | Cost |
| --- | --- | --- | --- | --- | --- | --- | --- | --- | --- | --- | --- | --- |
| 27 | 1.2.3 | **Ejecución y obtención de resultados** | 0.5d | 2024-02-06 15:00 | 2024-02-07 09:00 | 8, 20 | 140d | 0d |  | Investigador | 7h | 210 |
| 28 | 1.2.3.1 | Ejecución de auditoría previa al hardening | 1h | 2024-02-06 15:00 | 2024-02-06 16:00 |  | 113.67d |  |  | Investigador | 1h | 30 |
| 29 | 1.2.3.2 | Ejecución de script | 2h | 2024-02-06 15:00 | 2024-02-06 17:00 | 19, 26 | 113.33d | 0d |  | Investigador | 2h | 60 |
| 30 | 1.2.3.3 | Ejecución de auditoría posterior al hardening | 1h | 2024-02-07 08:00 | 2024-02-07 09:00 | 29 | 113.33d |  |  | Investigador | 1h | 30 |
| 31 | 1.2.4 | Análisis de los resultados | 3h | 2024-02-07 09:00 | 2024-02-07 12:00 | 27 | 113.33d |  |  | Investigador | 3h | 90 |
| 32 | 1.3 | **Redacción de la memoria** | 80.83d | 2024-03-18 10:00 | 2024-06-10 16:00 |  |  |  |  | Investigador | 725h | 21,750 |
| 33 | 1.3.1 | Redacción de motivación y objetivos | 1h | 2024-03-18 10:00 | 2024-03-18 11:00 |  | 77.67d | 1.17d |  | Investigador | 1h | 30 |
| 34 | 1.3.2 | **Redacción de estado del arte** | 14.17d | 2024-03-19 10:00 | 2024-04-02 16:00 | 33 |  |  |  | Investigador | 191h | 5,730 |
| 35 | 1.3.2.1 | **Redacción de conocimientos generales** | 12.5d | 2024-03-19 10:00 | 2024-04-01 14:00 |  | 95d | 0d |  | Investigador | 103h | 3,090 |
| 36 | 1.3.2.1.1 | Redacción de APT | 2h | 2024-03-19 10:00 | 2024-03-19 12:00 |  | 76.5d | 0d |  | Investigador | 2h | 60 |
| 37 | 1.3.2.1.2 | Redacción de grupos ransomware | 3h | 2024-03-19 13:00 | 2024-03-19 16:00 | 36 | 76.5d | 0d |  | Investigador | 3h | 90 |
| 38 | 1.3.2.1.3 | Redacción del framework Mittre Att&ck | 15h | 2024-03-19 16:00 | 2024-03-21 15:00 | 37 | 76.5d | 2d | start no earlier than 2023-12-13 10:00 | Investigador | 15h | 450 |
| 39 | 1.3.2.1.4 | Redacción de Conti | 1h | 2024-03-25 10:00 | 2024-03-25 11:00 | 38 | 74.5d | 0d | start no earlier than 2024-03-25 10:00 | Investigador | 1h | 30 |
| 40 | 1.3.2.1.5 | Redacción de Hive | 1h | 2024-03-25 11:00 | 2024-03-25 12:00 | 39 | 74.5d | 0d |  | Investigador | 1h | 30 |
| 41 | 1.3.2.1.6 | Redacción de Lazarus | 1h | 2024-03-25 13:00 | 2024-03-25 14:00 | 40 | 74.5d | 2.17d |  | Investigador | 1h | 30 |
| 42 | 1.3.2.1.7 | Redacción de PYSA | 1h | 2024-03-27 10:00 | 2024-03-27 11:00 | 41 | 72.33d | 0d | start no earlier than 2024-03-27 10:00 | Investigador | 1h | 30 |
| 43 | 1.3.2.1.8 | Redacción de los controles críticos de seguridad de CIS | 1h | 2024-03-27 11:00 | 2024-03-27 12:00 | 42 | 72.33d | 3.67d | start no earlier than 2023-12-19 10:00 | Investigador | 1h | 30 |
| 44 | 1.3.2.1.9 | Redacción de CIS benchmarks | 2h | 2024-04-01 10:00 | 2024-04-01 12:00 | 43 | 68.67d | 0d | start no earlier than 2024-04-01 10:00 | Investigador | 2h | 60 |
| 45 | 1.3.2.1.10 | Redacción de Ansible Lockdown | 1h | 2024-04-01 13:00 | 2024-04-01 14:00 | 44 | 68.67d |  |  | Investigador | 1h | 30 |
| 46 | 1.3.2.2 | Redacción de trabajos relacionados | 3h | 2024-04-01 14:00 | 2024-04-01 17:00 | 35 | 68.67d |  |  | Investigador | 3h | 90 |
| 47 | 1.3.3 | Redacción de metodología de trabajo | 24h | 2024-05-14 10:00 | 2024-05-17 10:00 | 7 | 21.67d | 0d | start no earlier than 2024-05-14 10:00 | Investigador | 24h | 720 |
| 48 | 1.3.4 | Redacción de resultados | 5h | 2024-03-18 10:00 | 2024-03-18 16:00 | 7 | 79.5d | 57.83d |  | Investigador | 5h | 150 |
| 49 | 1.3.5 | Redacción de conclusiones | 3h | 2024-05-17 10:00 | 2024-05-17 14:00 | 47, 48 | 21.67d | 0d |  | Investigador | 3h | 90 |
| 50 | 1.3.6 | Redacción de trabajo futuro | 1h | 2024-05-17 14:00 | 2024-05-17 15:00 | 49 | 21.67d | 0d |  | Investigador | 1h | 30 |
| 51 | 1.3.7 | Redacción de apéndices | 15h | 2024-05-17 15:00 | 2024-05-21 14:00 | 50 | 48.33d |  | start no earlier than 2024-01-17 10:00 | Investigador | 15h | 450 |
| 52 | 1.4 | Revisión de la memoria | 5h | 2024-07-10 10:00 | 2024-07-10 16:00 | 32 | 0d |  | start no earlier than 2024-07-10 10:00 | Investigador | 5h | 150 |
